# Planning_Project

Schedule from MS Project, 2014-09-08 to 2014-11-07, A marks actual dates.

## Calendars

- Standaard: Mon-Fri 08:00-12:00, 13:00-17:00; Sat-Sun off. Exceptions (off unless hours are given): 2014-10-20 to 2014-10-26 (Herfst vakantie).

## Resources

| Resource |
| --- |
| Marco Havermans |
| Pieter Hoek |
| Kevin Ly |

## Schedule

| ID | WBS | Task | Duration | Start | Finish | Predecessors | Complete | Remaining | Total slack | Free slack | Constraint | Deadline | Resources | Work | Actual work |
| --- | --- | --- | --- | --- | --- | --- | --- | --- | --- | --- | --- | --- | --- | --- | --- |
| 1 | 1 | **Inception Phase** | 4.83d | 2014-09-08 08:00 A | 2014-09-22 15:40 A |  | 100% |  |  |  |  | 2014-09-19 17:00 |  | 47.2h | 47.2h |
| 2 | 1.1 | Interview voorbereiden | 1h | 2014-09-08 08:00 A | 2014-09-08 14:20 A |  | 100% |  |  |  | must start on 2014-09-08 08:00 |  | Kevin Ly; Marco Havermans; Pieter Hoek | 2.7h | 2.7h |
| 3 | 1.2 | Intervies houden (2x Engels) | 2h | 2014-09-08 18:00 A | 2014-09-10 15:40 A | 2 | 100% |  |  |  | must start on 2014-09-08 08:00 |  | Kevin Ly; Marco Havermans; Pieter Hoek | 6h | 6h |
| 4 | 1.3 | Gespreksverslagen terugkoppelen | 2h | 2014-09-10 08:00 A | 2014-09-10 15:40 A | 3 | 100% |  |  |  | must start on 2014-09-10 08:00 |  | Kevin Ly; Marco Havermans; Pieter Hoek | 6h | 6h |
| 5 | 1.4 | Hernieuwde opdracht | 4h | 2014-09-12 08:00 A | 2014-09-15 17:00 A | 2, 3 | 100% |  |  |  | finish no earlier than 2014-09-15 17:00 | 2014-09-15 17:00 | Marco Havermans; Pieter Hoek | 4h | 4h |
| 6 | 1.5 | Prototype van schermen | 1.5h | 2014-09-15 08:00 A | 2014-09-18 12:40 A | 2, 3, 5 | 100% |  |  |  | finish no earlier than 2014-09-19 17:00 |  | Pieter Hoek | 1.5h | 1.5h |
| 7 | 1.6 | Offerte uitbrengen | 2h | 2014-09-17 13:20 A | 2014-09-17 15:40 A | 2, 3, 5 | 100% |  |  |  | start no earlier than 2014-09-17 08:00 |  | Marco Havermans | 2h | 2h |
| 8 | 1.7 | Vergadering met agenda en notulen | 1h | 2014-09-18 08:40 A | 2014-09-18 09:40 A |  | 100% |  |  |  | start no earlier than 2014-09-18 08:00 |  | Kevin Ly; Marco Havermans; Pieter Hoek | 3h | 3h |
| 9 | 1.8 | Plan van aanpak, inclusief risicoanalyse (Engels) | 4h | 2014-09-17 08:00 A | 2014-09-18 09:00 A | 5, 10 | 100% |  |  |  | finish no earlier than 2014-09-15 17:00 |  | Kevin Ly | 4h | 4h |
| 10 | 1.9 | Globale planning voor het gehele project | 1h | 2014-09-15 08:00 A | 2014-09-15 14:20 A |  | 100% |  |  |  | start no earlier than 2014-09-15 08:00 |  | Marco Havermans | 1h | 1h |
| 11 | 1.10 | Functioneel ontwerp inclusief taakverdeling in MS-Project (Engels) | 1h | 2014-09-22 13:20 A | 2014-09-22 14:20 A | 10, 5, 2, 3 | 100% |  |  |  | start no earlier than 2014-09-22 08:00 |  | Pieter Hoek | 1h | 1h |
| 12 | 1.11 | Use-Case Diagrammen | 2h | 2014-09-18 08:40 A | 2014-09-18 11:00 A | 11 | 100% |  |  |  | start no earlier than 2014-09-18 08:00 |  | Kevin Ly; Marco Havermans; Pieter Hoek | 6h | 6h |
| 13 | 1.12 | Use-case templates | 2h | 2014-09-18 08:40 A | 2014-09-18 11:00 A | 11 | 100% |  |  |  | start no earlier than 2014-09-18 08:00 |  | Kevin Ly; Marco Havermans; Pieter Hoek | 6h | 6h |
| 14 | 1.13 | Activiteitendiagrammen | 4h | 2014-09-19 13:40 A | 2014-09-22 15:40 A | 11 | 100% |  |  |  | finish no earlier than 2014-09-19 17:00 |  | Marco Havermans | 4h | 4h |
| 15 | 2 | **Elaboration Phase** | 1.88d | 2014-09-22 15:40 A | 2014-09-26 16:00 | 1 | 66% | 0.63d | 0.12d |  |  | 2014-09-26 17:00 |  | 50.67h | 37.67h |
| 16 | 2.1 | Technisch Ontwerp inclusief taakverdeling in MS-Project (Engels) | 2h | 2014-09-22 15:40 | 2014-09-24 13:40 | 14 |  |  | 1.75d |  | start no earlier than 2014-09-22 08:00 |  | Pieter Hoek; Kevin Ly; Marco Havermans | 6h |  |
| 17 | 2.2 | Modeldictionary | 10h | 2014-09-22 15:40 A | 2014-09-26 09:40 A | 1 | 100% |  |  |  | start no earlier than 2014-09-22 08:00 |  | Pieter Hoek; Marco Havermans; Kevin Ly | 30h | 30h |
| 18 | 2.3 | Klassendiagram | 2h | 2014-09-26 08:40 A | 2014-09-26 11:00 A | 17 | 100% |  |  |  | start no earlier than 2014-09-26 08:00 |  | Marco Havermans | 2h | 2h |
| 19 | 2.4 | Datadictionary | 3h | 2014-09-26 09:40 | 2014-09-26 13:40 | 17 |  |  | 0.38d |  | start no earlier than 2014-09-26 08:00 |  | Kevin Ly | 3h |  |
| 20 | 2.5 | Sequentiediagrammen | 4h | 2014-09-26 11:00 | 2014-09-26 16:00 | 18 |  |  | 0.12d |  | finish no earlier than 2014-09-25 17:00 |  | Pieter Hoek | 4h |  |
| 21 | 2.6 | Taakverdeling ontwikkelomgeving | 2h | 2014-09-25 08:00 A | 2014-09-25 11:00 A | 1 | 100% |  |  |  | start no earlier than 2014-09-25 08:00 |  | Kevin Ly | 2h | 2h |
| 22 | 2.7 | Hard- en software van de ingerichte ontwikkelomgeving | 3.67h | 2014-09-25 08:00 A | 2014-09-25 12:40 A | 1 | 100% |  |  |  | finish no earlier than 2014-09-25 17:00 |  | Kevin Ly | 3.67h | 3.67h |
| 23 | 3 | **Construction Phase** | 9.12d | 2014-09-29 13:20 | 2014-10-31 17:00 | 15 |  |  | 0d |  |  | 2014-10-31 17:00 |  | 170h |  |
| 24 | 3.1 | Het genormaliseerde databaseontwerp | 2h | 2014-09-29 13:20 | 2014-09-29 15:40 | 22 |  |  | 1.62d | 0.75d | start no earlier than 2014-09-29 08:00 |  | Kevin Ly | 2h |  |
| 25 | 3.2 | De database (gebouwd) | 3h | 2014-10-02 09:20 | 2014-10-02 17:00 | 24 |  |  | 0.88d | 0.12d | finish no earlier than 2014-10-02 17:00 |  | Pieter Hoek | 3h |  |
| 26 | 3.3 | Werkende solution | 50h | 2014-10-03 09:40 | 2014-10-29 17:00 | 25 |  |  | 0.75d | 0.04d | finish no earlier than 2014-10-29 17:00 |  | Kevin Ly; Marco Havermans; Pieter Hoek | 150h |  |
| 27 | 3.4 | Functioneel-technische acceptatietest maken | 2h | 2014-10-30 08:40 | 2014-10-30 11:00 | 26 |  |  | 0.71d |  | start no earlier than 2014-10-30 08:00 |  | Kevin Ly; Marco Havermans; Pieter Hoek | 6h |  |
| 28 | 3.5 | Functioneel-technische acceptatietest uitvoeren | 3h | 2014-10-31 13:40 | 2014-10-31 17:00 | 26, 27 |  |  | 0d |  | finish no earlier than 2014-10-31 17:00 |  | Kevin Ly; Marco Havermans; Pieter Hoek | 9h |  |

| ID | WBS | Task | Duration | Start | Finish | Predecessors | Total slack | Free slack | Constraint | Deadline | Resources | Work |
| --- | --- | --- | --- | --- | --- | --- | --- | --- | --- | --- | --- | --- |
| 29 | 4 | **Transition Phase** | 2.25d | 2014-11-03 13:20 | 2014-11-07 17:00 | 23 | 0d |  |  | 2014-11-07 17:00 |  | 45h |
| 30 | 4.1 | Een volledig werken systeem. Gerapporteerde bugs zijn opgelost. | 3h | 2014-11-03 13:20 | 2014-11-03 16:40 | 28, 26 | 1.25d | 0.12d | start no earlier than 2014-11-03 08:00 |  | Kevin Ly; Marco Havermans; Pieter Hoek | 9h |
| 31 | 4.2 | Gebruikershandleiding (Engels) | 3h | 2014-11-05 13:40 | 2014-11-05 17:00 | 30 | 1.12d | 0d | finish no earlier than 2014-11-05 17:00 |  | Kevin Ly; Marco Havermans; Pieter Hoek | 9h |
| 32 | 4.3 | Projectrapport ( = alle documentatie op volgorde; inclusief notulen) | 2h | 2014-11-05 14:40 | 2014-11-05 17:00 | 1, 15, 23 | 1.12d | 0d | finish no earlier than 2014-11-05 17:00 |  | Kevin Ly; Marco Havermans; Pieter Hoek | 6h |
| 33 | 4.4 | Teamrapport ( = groeps- en individuele reflectie ) | 2h | 2014-11-05 17:00 | 2014-11-06 10:40 | 30, 31, 32 | 1.12d |  | finish no earlier than 2014-11-05 17:00 |  | Kevin Ly; Marco Havermans; Pieter Hoek | 6h |
| 34 | 4.5 | Presentatie (in het engels) maken | 4h | 2014-11-07 12:00 | 2014-11-07 17:00 | 30 | 0d |  | finish no earlier than 2014-11-07 17:00 |  | Kevin Ly; Marco Havermans; Pieter Hoek | 12h |
| 35 | 4.6 | Logboek Voortgangsbewaking en Samenwerking | 1h | 2014-11-03 13:20 | 2014-11-03 14:20 |  | 2.12d |  | start no earlier than 2014-11-03 08:00 |  | Kevin Ly; Marco Havermans; Pieter Hoek | 3h |
